# CTRP2-ProjectSchedule

Schedule from MS Project, 2011-08-10 to 2012-09-11, A marks actual dates.

## Calendars

- Standard: Mon-Fri 08:00-12:00, 13:00-17:00; Sat-Sun off.

## Resources

| Resource |
| --- |
| Bala |
| Smita |
| Nelli |
| Paula |
| Hugh |
| Steve Matyas |
| Todd |
| Steve L |
| Sohal |
| Harsha |
| Naveen |
| BDA Team |
| Systems Team |
| QA3 |
| QA4 |
| QA5 |
| Vrushali |
| Max |
| VCDE |
| Anu |
| rushali |
| CTEP |
| caXchange |
| C3PR |
| caAERS |
| PSC |
| LV |
| BDA |
| "C3PR |
| Documentation |
| caGrid |
| QA |
| BAM |
| Edmond |
| NCI |
| SAIC-F |
| Web Team |
| Bill Dyer |
| CCTS Team |
| John S |
| Patrick |
| Architects |
| Christo |
| John |
| Rhett |
| Nellie |
| Steve |
| Kalpesh |
| David L |
| Stevel L |
| Kumar C |
| Gia |
| Wendy |
| Raj |
| Steve M |
| Lauren |
| Systems |
| CTRO |
| Hannes |
| SMEs |
| Gisele |
| Joe |
| CTRP Dev team |
| CBIIT |
| All |
| Analysts |
| TBD |
| Charles |
| ESST |
| Developers |
| Lisa |
| Christophe |
| Krishna |
| QA1 |
| QA2 |
| David |
| Security |
| Arch |
| Tech Leads |
| Paula B |
| Kalpana |
| KK |
| Abe |
| Kim |
| Vijay |
| CAT |
| George |
| Larry |
| Michael O |
| Resource 1 |
| Resource 2 |
| Resource3 |
| Resource 4 |
| Resource 5 |
| Gisele S |
| Dianne R |
| HR |
| NA |
| SL |
| ScenPro |
| 5AM |
| TP |
| EM |
| KE |
| JM |
| DL |
| Paul |
| Michael |
| Eilis |
| Team |
| Dev team |
| Ram P |
| NIH 508 team |
| Bryan |
| Bill D |
| Quy |
| Andrew |
| Rashmi |

## Schedule

| ID | WBS | Task | Type | Duration | Start | Finish | Predecessors | Complete | Remaining | Total slack | Free slack | Constraint | Resources | Work |
| --- | --- | --- | --- | --- | --- | --- | --- | --- | --- | --- | --- | --- | --- | --- |
| 1 | 1 | **CAARRAY 2.x** |  | 285d | 2011-08-10 A | 2012-09-11 |  | 32% | 195.03d | 0d |  | start no earlier than 2011-08-03 |  | 7080h |
| 2 | 1.1 | **2.4.1** |  | 30d | 2011-08-10 A | 2011-09-20 |  | 66% | 10.29d | 255d |  | start no earlier than 2011-08-10 |  | 720h |
| 3 | 1.1.1 | **2.4.1 RC6** |  | 20d | 2011-08-10 A | 2011-09-06 |  | 73% | 5.36d | 0d |  |  | Andrew; Quy; Rashmi | 480h |
| 4 | 1.1.1.1 | caArray Importer: Regression test on local tier |  | 20d | 2011-08-10 A | 2011-09-06 A |  | 100% |  |  |  |  |  |  |
| 5 | 1.1.1.2 | caArray Importer: Test import on local tier |  | 20d | 2011-08-10 A | 2011-09-06 A |  | 100% |  |  |  |  |  |  |
| 6 | 1.1.1.3 | API Partner Testing on STAGE |  | 20d | 2011-08-10 A | 2011-09-06 A |  | 100% |  |  |  |  |  |  |
| 7 | 1.1.1.4 | Section 508 compliance: Run scan and issue-manage. |  | 20d | 2011-08-10 A | 2011-09-06 A |  | 100% |  |  |  |  |  |  |
| 8 | 1.1.1.5 | Write Grid client to get expt and hyb counts for Ken Buetow |  | 20d | 2011-08-10 A | 2011-09-06 A |  | 100% |  |  |  |  |  |  |
| 9 | 1.1.1.6 | Write and test QTP automated script to load TCGA data |  | 20d | 2011-08-10 A | 2011-09-06 A |  | 100% |  |  |  |  |  |  |
| 10 | 1.1.1.7 | Bug fix for ARRAY-2059 that is a blocker for the TCGA data load |  | 20d | 2011-08-10 A | 2011-09-06 |  | 80% | 4d | 0d |  |  |  |  |
| 11 | 1.1.1.8 | Section 508 compliance: Fix ARRAY-1911 to get 90% score |  | 20d | 2011-08-10 A | 2011-09-06 A |  | 100% |  |  |  |  |  |  |
| 12 | 1.1.1.9 | Decide on solution to TCGA data load issue |  | 20d | 2011-08-10 A | 2011-09-06 |  | 25% | 15d | 0d |  |  |  |  |
| 13 | 1.1.1.10 | Bug fixes for ARRAY-2053 and ARRAY-2055 |  | 20d | 2011-08-10 | 2011-09-06 |  |  |  | 0d |  |  |  |  |
| 14 | 1.1.1.11 | Test bug fixes on QA tier |  | 20d | 2011-08-10 | 2011-09-06 |  |  |  | 0d |  |  |  |  |
| 15 | 1.1.2 | **2.4.1 Deployment** |  | 10d | 2011-09-07 | 2011-09-20 | 3 |  |  | 255d |  |  | Rashmi; Andrew; Quy | 240h |
| 16 | 1.1.2.1 | Test bug fixes on STAGE |  | 5d | 2011-09-07 | 2011-09-13 |  |  |  | 260d |  |  |  |  |
| 17 | 1.1.2.2 | Regression testing on STAGE |  | 5d | 2011-09-07 | 2011-09-13 |  |  |  | 260d |  |  |  |  |
| 18 | 1.1.2.3 | Upload Release Artifacts |  | 5d | 2011-09-07 | 2011-09-13 |  |  |  | 260d |  |  |  |  |
| 19 | 1.1.2.4 | App Scan on STAGE |  | 5d | 2011-09-07 | 2011-09-13 |  |  |  | 255d | 0d |  |  |  |
| 20 | 1.1.2.5 | Deploy to PRODUCTION |  | 5d | 2011-09-14 | 2011-09-20 | 19 |  |  | 255d | 0d |  |  |  |
| 21 | 1.2 | RELEASE 2.4.1 | milestone | 0d | 2011-09-20 | 2011-09-20 | 20 |  |  | 255d |  |  |  |  |
| 22 | 1.3 | **2.5.0 (rough LOEs)** |  | 115d | 2011-09-07 | 2012-02-14 | 3 |  |  | 0d |  |  | Andrew; Quy; Rashmi | 2760h |
| 23 | 1.3.1 | Jboss 5.1 / Java 6 upgrade |  | 5d | 2011-09-07 | 2011-09-13 |  |  |  | 0d |  |  |  |  |
| 24 | 1.3.2 | File system storage of raw files |  | 5d | 2011-09-14 | 2011-09-20 | 23 |  |  | 0d |  |  |  |  |
| 25 | 1.3.3 | Plug-in architecture |  | 5d | 2011-09-21 | 2011-09-27 | 24 |  |  | 0d |  |  |  |  |
| 26 | 1.3.4 | Fix CI test suite |  | 5d | 2011-09-28 | 2011-10-04 | 25 |  |  | 0d |  |  |  |  |
| 27 | 1.3.5 | Upgrade to Anthill Pro 3 |  | 5d | 2011-10-05 | 2011-10-11 | 26 |  |  | 0d |  |  |  |  |
| 28 | 1.3.6 | Resumable uploads/downloads |  | 20d | 2011-10-12 | 2011-11-08 | 27 |  |  | 0d |  |  |  |  |
| 29 | 1.3.7 | Split imports into multiple transactions |  | 30d | 2011-11-09 | 2011-12-20 | 28 |  |  | 0d |  |  |  |  |
| 30 | 1.3.8 | Bug fixes |  | 30d | 2011-12-21 | 2012-01-31 | 29 |  |  | 0d |  |  |  |  |
| 31 | 1.3.9 | Deployment overhead |  | 10d | 2012-02-01 | 2012-02-14 | 30 |  |  | 0d |  |  |  |  |

| ID | WBS | Task | Type | Duration | Start | Finish | Predecessors | Total slack | Resources | Work |
| --- | --- | --- | --- | --- | --- | --- | --- | --- | --- | --- |
| 32 | 1.4 | **PRODUCT BACKLOG (rough LOEs)** |  | 150d | 2012-02-15 | 2012-09-11 | 22 | 0d | Andrew; Quy; Rashmi | 3600h |
| 33 | 1.4.1 | **Grid Security (TRANSCEND)** |  | 40d | 2012-02-15 | 2012-04-10 |  | 0d |  |  |
| 34 | 1.4.1.1 | ARRAY-1463 - Login with caGrid account |  | 10d | 2012-02-15 | 2012-02-28 |  | 0d |  |  |
| 35 | 1.4.1.2 | ARRAY-1928 - Migrate CSM to Grid accounts |  | 5d | 2012-02-29 | 2012-03-06 | 34 | 0d |  |  |
| 36 | 1.4.1.3 | ARRAY-1353 - Grid authentication in remote Java API |  | 10d | 2012-03-07 | 2012-03-20 | 35 | 0d |  |  |
| 37 | 1.4.1.4 | ARRAY-1462 - Installer/build infrastructure for secure Grid |  | 15d | 2012-03-21 | 2012-04-10 | 36 | 0d |  |  |
| 38 | 1.4.1.5 | ARRAY-1929 - Grid Grouper | milestone | 0d | 2012-04-10 | 2012-04-10 | 37 | 0d |  |  |
| 39 | 1.4.1.6 | ARRAY-1472 - Bulk migration of LDAP to Grid | milestone | 0d | 2012-04-10 | 2012-04-10 | 38 | 0d |  |  |
| 40 | 1.4.2 | **Single Sign-on (TRANSCEND)** |  | 20d | 2012-04-11 | 2012-05-08 | 33 | 0d |  |  |
| 41 | 1.4.2.1 | ARRAY-1930 |  | 20d | 2012-04-11 | 2012-05-08 |  | 0d |  |  |
| 42 | 1.4.3 | **Audit Trail (TRANSCEND)** |  | 20d | 2012-05-09 | 2012-06-05 | 40 | 0d |  |  |
| 43 | 1.4.3.1 | ARRAY-1931 - Sample deletions and data imports |  | 10d | 2012-05-09 | 2012-05-22 |  | 0d |  |  |
| 44 | 1.4.3.2 | ARRAY-1933 - Log visibility to Data Owner |  | 5d | 2012-05-23 | 2012-05-29 | 43 | 0d |  |  |
| 45 | 1.4.3.3 | ARRAY-1932 - Publish log |  | 5d | 2012-05-30 | 2012-06-05 | 44 | 0d |  |  |
| 46 | 1.4.4 | **File-level permissions for role-based security (TRANSCEND)** |  | 20d | 2012-06-06 | 2012-07-03 | 42 | 0d |  |  |
| 47 | 1.4.4.1 | ARRAY-1938 |  | 20d | 2012-06-06 | 2012-07-03 |  | 0d |  |  |
| 48 | 1.4.5 | **Maintenance and Bug Fixes** |  | 10d | 2012-07-04 | 2012-07-17 | 46 | 0d |  |  |
| 49 | 1.4.5.1 | Collaborator Group Defect |  | 10d | 2012-07-04 | 2012-07-17 |  | 0d |  |  |
| 50 | 1.4.5.2 | Expand unparsed file types | milestone | 0d | 2012-07-17 | 2012-07-17 | 49 | 0d |  |  |
| 51 | 1.4.5.3 | IE 8 UI bugs | milestone | 0d | 2012-07-17 | 2012-07-17 | 50 | 0d |  |  |
| 52 | 1.4.5.4 | MAGE-TAB v1.1 support | milestone | 0d | 2012-07-17 | 2012-07-17 | 51 | 0d |  |  |
| 53 | 1.4.5.5 | Clean up duplicate terms | milestone | 0d | 2012-07-17 | 2012-07-17 | 52 | 0d |  |  |
| 54 | 1.4.5.6 | Import verification to prevent unintentional biomaterial/term creation | milestone | 0d | 2012-07-17 | 2012-07-17 | 53 | 0d |  |  |
| 55 | 1.4.5.7 | Prevent multiple hybs to 1 file association | milestone | 0d | 2012-07-17 | 2012-07-17 | 54 | 0d |  |  |
| 56 | 1.4.5.8 | Fix SDRF export of multiple derived data file columns | milestone | 0d | 2012-07-17 | 2012-07-17 | 55 | 0d |  |  |
| 57 | 1.4.5.9 | Fix LSIDs for unparsed array designs | milestone | 0d | 2012-07-17 | 2012-07-17 | 56 | 0d |  |  |

| ID | WBS | Task | Duration | Start | Finish | Predecessors | Total slack |
| --- | --- | --- | --- | --- | --- | --- | --- |
| 58 | 1.4.6 | **Release Overhead** | 40d | 2012-07-18 | 2012-09-11 | 48 | 0d |
| 59 | 1.4.6.1 | Bug fixes | 30d | 2012-07-18 | 2012-08-28 |  | 0d |
| 60 | 1.4.6.2 | Deployment overhead | 10d | 2012-08-29 | 2012-09-11 | 59 | 0d |
